Schedule from MS Project, 2023-09-19 to 2025-02-21, status date 2023-09-19, A marks actual dates.

## Calendars

- Стандартный: Mon-Fri 09:00-13:00, 14:00-18:00; Sat-Sun off. Exceptions (off unless hours are given): 2024-01-01 to 2024-01-08 (Новый Год), 2024-02-23 to 2024-02-25 (День Защитника Отечества), 2024-03-08 to 2024-03-10 (Женский день), 2024-04-28 to 2024-05-01 (1 Мая), 2024-05-09 to 2024-05-12 (9 Мая), 2024-06-12 (День России), 2024-11-03 to 2024-11-04 (День народного единства).

## Schedule

| ID | WBS | Task | Type | Duration | Start | Finish | Predecessors | Complete | Remaining | Baseline start | Baseline finish | Baseline duration | Total slack | Constraint | Text30 | Примечание |
| --- | --- | --- | --- | --- | --- | --- | --- | --- | --- | --- | --- | --- | --- | --- | --- | --- |
| 1 | 2.1 | Оплата аванса по Договор с ООО "ХХХ" | milestone | 0d | 2023-09-21 A | 2023-09-21 A |  | 100% |  | 2023-09-21 | 2023-09-21 | 0d |  | start no earlier than 2023-09-21 | Д_сат |  |
| 2 | 2.2 | Оплата аванса ООО "ННН" | milestone | 0d | 2023-10-11 A | 2023-10-11 A |  | 100% |  | 2023-10-11 | 2023-10-11 | 0d |  | start no earlier than 2023-10-11 | Д_али |  |
| 3 | 3 | **Граничные условия проекта** |  | 20d | 2025-01-24 | 2025-02-21 |  |  |  |  |  |  | 0d |  |  |  |
| 4 | 3.1 | Окончание предпроектных работ | milestone | 0d | 2025-01-24 | 2025-01-24 | 7 |  |  |  |  |  | 20d |  |  |  |
| 5 | 3.2 | Прохождение экспретизы ПД | milestone | 0d | 2025-01-31 | 2025-01-31 | 65 |  |  |  |  |  | 15d |  |  |  |
| 6 | 3.3 | Получение РнС | milestone | 0d | 2025-02-21 | 2025-02-21 | 74 |  |  |  |  |  | 0d |  |  |  |
| 7 | 4 | **Предпроектные работы** |  | 336.5d | 2023-09-21 A | 2025-01-24 | 1 | 67% | 110.62d | 2023-09-21 | 2024-01-17 | 79d | 0d |  | ПП |  |
| 8 | 4.2 | **Сбор и комплектация ИРД** |  | 336.5d | 2023-09-21 A | 2025-01-24 |  | 66% | 115.34d | 2023-09-21 | 2023-12-13 | 60d | 0d |  | ПП_ИРД |  |
| 9 | 4.2.1 | **Взаимодествие в ДКН РФ** |  | 336.5d | 2023-09-21 A | 2025-01-24 |  | 40% | 203.4d | 2023-09-21 | 2023-10-26 | 26d | 0d |  | ПП_ДКН |  |
| 10 | 4.2.1.2 | TEST |  | 290d | 2023-10-21 A | 2024-12-22 |  | 23% | 223d | 2023-09-21 | 2023-10-19 | 21d | 0d | finish no earlier than 2024-12-22 | ПП_ДКН_запдкн |  |
| 11 | 4.2.1.1 | Получение информации от ДКН по объектам ОКН влияющих на территорию застройки |  | 67d | 2023-09-21 A | 2023-12-22 A |  | 100% |  | 2023-09-21 | 2023-10-19 | 21d |  | finish no earlier than 2023-12-22 | ПП_ДКН_запдкн |  |
| 12 | 4.1.1.3 | Согласование объекта в ДКН |  | 69d | 2024-01-15 A | 2025-01-24 | 11FS-10d, 10FS-10d | 50% | 34.5d |  |  |  | 0d | finish no earlier than 2024-04-22 |  |  |
| 13 | 4.3 | **Внесение изменений в ЕГРН** |  | 27d | 2023-10-05 A | 2023-11-10 A |  | 100% |  | 2023-10-05 | 2023-11-10 | 27d |  |  | ПП_ЕГРН |  |
| 14 | 4.3.1 | Запрос на снятие обременения по арненде ЗАО "ZZZ" |  | 21d | 2023-10-05 A | 2023-11-02 A |  | 100% |  | 2023-10-05 | 2023-11-02 | 21d |  | must start on 2023-10-05 | ПП_ЕГРН_обрюнн |  |
| 15 | 4.1.2.2 | Подготовка документации для снятия обременения |  | 5d | 2023-11-03 A | 2023-11-09 A | 14 | 100% |  | 2023-11-03 | 2023-11-09 | 5d |  |  |  |  |
| 16 | 4.1.2.3 | Направление сформированного запроса |  | 1d | 2023-11-10 A | 2023-11-10 A | 15 | 100% |  | 2023-11-10 | 2023-11-10 | 1d |  |  |  |  |
| 17 | 4.2.2 | **Согласование с УУУ** |  | 65d | 2023-10-13 A | 2024-01-19 A |  | 100% |  | 2023-10-13 | 2023-11-23 | 30d |  |  | ПП_СВЧ |  |
| 18 | 4.2.2.1 | Запрос о согласовании застройки в правительство г.Москвы и ответ |  | 65d | 2023-10-13 A | 2024-01-19 A |  | 100% |  | 2023-10-13 | 2023-11-23 | 30d |  | finish no earlier than 2023-12-15 | ПП_СВЧ_запмос | Срок указан на основании устных договренносте |
| 19 | 4.1.3.2 | Запрос о согласовании застройки в ФСО |  | 40d | 2023-11-09 A | 2024-01-11 A |  | 100% |  |  |  |  |  | start no earlier than 2023-11-09 |  |  |
| 20 | 4.5 | **Энергоаудит на существующего офисного здания** |  | 105d | 2023-09-21 A | 2024-02-22 |  | 86% | 14.33d | 2023-09-21 | 2023-11-14 | 39d | 0d |  | ПП_ЭСФ |  |
| 21 | 4.5.1 | Определение резервов энергоресурсов существующего здания |  | 10d | 2023-09-21 A | 2023-10-04 A |  | 100% |  | 2023-09-21 | 2023-10-04 | 10d |  |  | ПП_ЭСФ_рэр |  |
| 22 | 4.5.2 | Расчет потребности в ресурсах проектируемого здания |  | 105d | 2023-09-21 A | 2024-02-22 |  | 85% | 15.7d | 2023-09-21 | 2023-11-08 | 35d | 0d | finish no earlier than 2024-02-22 | ПП_ЭСФ_рпр |  |
| 23 | 4.1.5 | **Исходно-разрешительная документация** |  | 15d | 2023-12-11 A | 2023-12-29 A |  | 100% |  | 2023-10-11 | 2023-11-08 | 21d |  |  |  |  |
| 24 | 4.1.5.1 | Справка о фоновых концентрациях вредных веществ |  | 15d | 2023-12-11 A | 2023-12-29 A |  | 100% |  | 2023-10-11 | 2023-11-08 | 21d |  | finish no earlier than 2023-12-27 |  |  |
| 25 | 4.1.5.2 | Справка о климатических условиях строительства |  | 15d | 2023-12-11 A | 2023-12-29 A |  | 100% |  | 2023-10-11 | 2023-11-08 | 21d |  |  |  |  |

| ID | WBS | Task | Type | Duration | Start | Finish | Predecessors | Complete | Remaining | Baseline start | Baseline finish | Baseline duration | Total slack | Free slack | Constraint | Text30 | Подрядчик |
| --- | --- | --- | --- | --- | --- | --- | --- | --- | --- | --- | --- | --- | --- | --- | --- | --- | --- |
| 26 | 4.2.4 | **ТУ и технологическое присоединение к инженерным сетям** |  | 53d | 2023-12-28 A | 2024-03-21 | 22 | 88% | 6.62d | 2023-11-15 | 2023-12-13 | 21d | 213.5d |  |  | ПП_ТУ |  |
| 27 | 4.2.4.1 | Электроэнергия |  | 45d | 2023-12-28 A | 2024-03-11 |  | 90% | 4.5d | 2023-11-15 | 2023-12-13 | 21d | 221.5d |  | finish no earlier than 2024-02-22 | ПП_ТУ_ээ |  |
| 28 | 4.2.4.2 | Водоснабжение ХВС и канализация |  | 40d | 2023-12-28 A | 2024-03-05 |  | 90% | 4d | 2023-11-15 | 2023-12-13 | 21d | 225d |  | finish no earlier than 2024-02-22 | ПП_ТУ_хвс |  |
| 29 | 4.1.6.3 | Теплоснабжение |  | 40d | 2024-01-24 A | 2024-03-21 |  | 75% | 10d |  |  |  | 213.5d |  |  |  |  |
| 30 | 4.2.4.3 | Водоотведение (Ливневка) |  | 23d | 2023-12-28 A | 2024-02-09 A |  | 100% |  | 2023-11-15 | 2023-12-13 | 21d |  |  | finish no earlier than 2024-02-22 | ПП_ТУ_вдо |  |
| 31 | 4.2.3 | **Инженерные изыскания** |  | 104d | 2023-10-17 A | 2024-03-20 |  | 74% | 26.66d | 2023-09-21 | 2024-01-17 | 79d | 201.5d |  |  | ПП_ИИ |  |
| 32 | 4.2.1 | **Инженерные изыскания** |  | 76d | 2023-10-17 A | 2024-02-07 A |  | 100% |  | 2023-10-17 | 2024-01-17 | 61d |  |  |  |  |  |
| 33 | 4.2.3.1 | Геодезические изыскания (геоподоснова) |  | 16d | 2023-10-17 A | 2023-11-07 A |  | 100% |  | 2023-10-17 | 2023-11-07 | 16d |  |  | start no earlier than 2023-10-17 | ПП_ИИ_игди |  |
| 34 | 4.2.3.2 | Археологические изыскания | inactive | 21d | 2024-04-05 | 2024-05-08 | 50 |  |  | 2023-10-27 | 2023-12-11 | 32d | 169.5d |  |  | ПП_ИИ_иаи |  |
| 35 | 4.2.3.3 | Геологические изыскания |  | 59d | 2023-11-09 A | 2024-02-07 A | 33FS-5d | 100% |  | 2023-11-01 | 2024-01-17 | 50d |  |  | finish no earlier than 2024-02-07 | ПП_ИИ_иги |  |
| 36 | 4.2.3.4 | Экологические изыскания |  | 35d | 2023-11-09 A | 2023-12-27 A | 33FS-5d | 100% |  | 2023-11-01 | 2023-12-19 | 35d |  |  |  | ПП_ИИ_иэи |  |
| 37 | 4.2.2 | **Влияние на окружающую застройку** |  | 45d | 2024-01-16 A | 2024-03-20 |  | 23% | 34.61d | 2023-09-21 | 2023-12-13 | 60d | 201.5d |  |  |  | НИЦ Строительство |
| 38 | 4.4 | Обследования прилегающих зданий |  | 30d | 2024-01-16 A | 2024-02-27 |  | 29% | 21.25d | 2023-09-21 | 2023-11-08 | 35d | 6d | 3d | start no earlier than 2024-01-16 | ПП_ОПЗ |  |
| 39 | 4.4.1 | Оценка влияния на окружающую застройку |  | 15d | 2024-02-20 A | 2024-03-13 | 38FS-8d | 20% | 12d | 2023-11-09 | 2023-12-13 | 25d | 0.95d | 0d |  | ПП_ОПЗ_овноз |  |
| 40 | 4.4.2 | Разработка плана геотехнического мониторинга окружающей застройки |  | 10d | 2024-03-06 A | 2024-03-20 | 39FS-5d | 10% | 9.05d | 2023-12-14 | 2024-02-08 | 35d | 201.5d |  |  | ПП_ОПЗ_пгмоз |  |
| 41 | 5 | **Согласование дизайн концепции** |  | 100d | 2023-09-19 A | 2024-02-13 |  | 95% | 5d | 2023-09-19 | 2024-01-09 | 75d | 0d |  |  | ДК |  |
| 42 | 5.1 | Адаптация и утверждение Заказчиком концепции офисного здания |  | 100d | 2023-09-19 A | 2024-02-13 |  | 95% | 5d | 2023-09-19 | 2024-01-09 | 75d | 0d |  | finish no earlier than 2024-02-13 | ДК_уко |  |
| 43 | 6 | **Архитектурно-градостроительные решения** |  | 60d | 2024-01-17 A | 2024-04-11 | 42FS-20d | 5% | 57d | 2023-12-05 | 2024-04-04 | 80d | 218.5d |  |  |  |  |
| 44 | 6.1 | Разработка АГР |  | 35d | 2024-01-17 A | 2024-03-06 |  | 9% | 32d | 2023-12-05 | 2024-02-06 | 40d | 218.5d | 0d | finish no earlier than 2024-02-22 |  |  |
| 45 | 6.2 | Согласование АГР к Комитете по архитектуре и градостроительству г. Москвы |  | 25d | 2024-03-07 | 2024-04-11 | 44 |  |  | 2024-02-07 | 2024-04-04 | 40d | 218.5d |  |  |  |  |
| 46 | 7 | **Задание на проектирование** |  | 113d | 2023-09-19 A | 2024-03-04 |  | 74% | 29.7d | 2023-09-19 | 2023-12-25 | 70d | 245.5d |  |  |  |  |
| 47 | 7.1 | Разработка задания на проектирование |  | 107d | 2023-09-19 A | 2024-02-22 |  | 78% | 23.7d | 2023-09-19 | 2023-12-11 | 60d | 245.5d | 0d | finish no earlier than 2024-02-22 |  |  |
| 48 | 7.2 | Утверждение задиния на проектирование |  | 6d | 2024-02-26 | 2024-03-04 | 47 |  |  | 2023-12-12 | 2023-12-25 | 10d | 245.5d |  |  |  |  |
| 49 | 6 | **Разработка Проектной документации** |  | 126d | 2023-10-11 A | 2024-04-15 | 2 | 16% | 105.84d | 2023-10-11 | 2024-04-05 | 120d | 183.5d |  |  | ПД |  |
| 50 | 4.2.1.3 | Разработка и сопровождение материалов о сохранности ОАН |  | 55d | 2024-01-17 A | 2024-04-04 |  | 3% | 53.25d | 2023-10-27 | 2024-01-26 | 60d | 190.5d | 0d | start no earlier than 2024-01-17 | ПП_ДКН_оприуп |  |
| 51 | 6.1.1 | Пояснительная записка |  | 21d | 2024-03-06 | 2024-04-04 | 53FF+5d, 57FF+5d, 60FF+5d |  |  | 2024-01-25 | 2024-02-22 | 21d | 190.5d |  |  | ПД_ОС_ПЗ |  |

| ID | WBS | Task | Type | Duration | Start | Finish | Predecessors | Complete | Remaining | Baseline start | Baseline finish | Baseline duration | Total slack | Free slack | Text30 |
| --- | --- | --- | --- | --- | --- | --- | --- | --- | --- | --- | --- | --- | --- | --- | --- |
| 52 | 6.1 | **Общестроительные** |  | 126d | 2023-10-11 A | 2024-04-15 |  | 34% | 83.05d | 2023-10-11 | 2024-02-22 | 91d | 183.5d |  | ПД_ОС |
| 53 | 6.1.2 | Объемно-планировочные и архитектурные решения |  | 94d | 2023-10-11 A | 2024-02-28 |  | 51% | 46.5d | 2023-10-11 | 2023-12-05 | 40d | 10.5d | 0d | ПД_ОС_ар |
| 54 | 6.1.3 | Конструктивные решения |  | 36d | 2024-01-31 | 2024-03-22 | 53FS-20d |  |  | 2023-11-07 | 2024-01-19 | 48d | 10.5d | 0d | ПД_ОС_кр |
| 55 | 6.1.4 | Схема планировочной организации земельного участка |  | 20d | 2024-02-20 A | 2024-03-20 | 54FS-20d | 63% | 7.5d | 2023-10-11 | 2023-11-14 | 25d | 201.5d |  | ПД_ОС_спозу |
| 56 | 6.1.5 | Проект организации строительства |  | 26d | 2024-03-11 | 2024-04-15 | 54FS-10d |  |  | 2023-12-15 | 2024-02-16 | 40d | 183.5d |  | ПД_ОС_пос |
| 57 | 6.2 | **Инженерное обеспечение строительства** |  | 31d | 2024-02-13 | 2024-03-28 |  |  |  | 2023-12-05 | 2024-02-29 | 56d | 190.5d | 0d | ПД_ИОС |
| 58 | 6.2.1 | Сети связи |  | 20d | 2024-02-29 | 2024-03-28 | 54SS+20d |  |  | 2023-12-05 | 2024-02-06 | 40d | 190.5d |  | ПД_ИОС_сс |
| 59 | 6.2.2 | Инженерно-техническое обеспечение |  | 30d | 2024-02-13 | 2024-03-27 | 54FS-27d |  |  | 2023-12-06 | 2024-02-29 | 55d | 191.5d |  | ПД_ИОС_ито |
| 60 | 6.3 | **Безопасность** |  | 21d | 2024-02-21 | 2024-03-22 | 57FS-25d |  |  | 2024-01-25 | 2024-02-22 | 21d | 194.5d | 4d | ПД_БТ |
| 61 | 6.3.1 | Мероприятия по обеспечению пожарной безопасности |  | 21d | 2024-02-21 | 2024-03-22 |  |  |  | 2024-01-25 | 2024-02-22 | 21d | 194.5d |  | ПД_БТ_мопб |
| 62 | 6.3.2 | Требования к обеспечению безопасной эксплуотации ОКС |  | 21d | 2024-02-21 | 2024-03-22 |  |  |  | 2024-01-25 | 2024-02-22 | 21d | 194.5d |  | ПД_БТ_обэ |
| 63 | 6.3.3 | Мероприятия по охране окружающей среды |  | 21d | 2024-02-21 | 2024-03-22 |  |  |  | 2024-01-25 | 2024-02-22 | 21d | 194.5d |  | ПД_БТ_оос |
| 64 | 6.3.4 | Мероприятия по обеспечению доступа инвалидов к ОКС |  | 21d | 2024-02-21 | 2024-03-22 |  |  |  | 2024-01-25 | 2024-02-22 | 21d | 194.5d |  | ПД_БТ_моди |
| 65 | 7 | **Прохождение Экспертизы ПД** |  | 18d | 2025-01-07 | 2025-01-31 |  |  |  | 2024-04-08 | 2024-05-13 | 21d | 0d |  | ЭПД |
| 66 | 7.1 | Загрузка полного комплекта документации в экспертизу |  | 1d | 2025-01-07 | 2025-01-08 | 49, 8FS-13d, 31 |  |  | 2024-04-08 | 2024-04-08 | 1d | 0d |  | ЭПД_зкд |
| 67 | 7.2 | Рассмотрение экспертной коммиссией ПД |  | 12d | 2025-01-08 | 2025-01-24 | 66 |  |  | 2024-04-09 | 2024-04-24 | 12d | 0d |  | ЭПД_рэк |
| 68 | 7.3 | Иправление замечаний экспертизы |  | 2d | 2025-01-24 | 2025-01-28 | 67 |  |  | 2024-04-25 | 2024-05-06 | 5d | 0d |  | ЭПД_изэ |
| 69 | 7.4 | Получение положительного заключения экспертизы |  | 3d | 2025-01-28 | 2025-01-31 | 68 |  |  | 2024-05-07 | 2024-05-13 | 3d | 0d |  | ЭПД_пзэ |
| 70 | 8 | **Формирование пакета документов для получения РнС** |  | 11d | 2025-01-17 | 2025-02-03 |  |  |  | 2024-01-29 | 2024-05-27 | 79d | 1d |  | ДРнС |
| 71 | 8.2 | Сбор комплекта необходимых документов |  | 1d | 2025-01-31 | 2025-02-03 | 69 |  |  | 2024-05-14 | 2024-05-27 | 10d | 0d |  | ДРнС_пкд |
| 72 | 10.2 | Защита и согласование решений в ДКН |  | 10d | 2025-01-17 | 2025-01-31 | 69FF, 50 |  |  | 2024-02-27 | 2024-03-27 | 21d | 1d | 0d |  |
| 73 | 10.3 | Получение акта(ов) ГИКЭ | milestone | 1d | 2025-01-31 | 2025-02-03 | 72 |  |  | 2024-01-29 | 2024-02-26 | 20d | 14d |  |  |
| 74 | 9.1 | **Получение РнС** |  | 14d | 2025-02-03 | 2025-02-21 | 65 |  |  | 2024-05-14 | 2024-06-06 | 18d | 0d |  | РнС_прнс |
| 75 | 11.1 | Получение РнС |  | 14d | 2025-02-03 | 2025-02-21 | 72, 71 |  |  | 2024-05-14 | 2024-06-06 | 18d | 0d |  |  |
